# Software Development

Schedule from MS Project, 2014-02-17 to 2014-06-17, costs in $.

## Calendars

- Standard: Mon-Fri 08:00-12:00, 13:00-17:00; Sat-Sun off.

## Resources

| Resource | Rate |
| --- | --- |
| Management | 75 |
| Project Manager | 85 |
| Analyst | 65 |
| Developer | 62 |
| Testers | 58 |
| Deployment Team | 45 |

## Schedule

| ID | WBS | Task | Type | Duration | Start | Finish | Predecessors | Baseline start | Baseline finish | Baseline duration | Total slack | Resources | Work | Cost | Baseline cost |
| --- | --- | --- | --- | --- | --- | --- | --- | --- | --- | --- | --- | --- | --- | --- | --- |
| 1 | 1 | **Inception** |  | 33.5d | 2014-02-17 | 2014-04-03 |  |  |  |  | 0d |  | 140h | 10,300 |  |
| 2 | 1.1 | **Scope** |  | 14.5d | 2014-02-17 | 2014-03-07 |  | 2014-02-17 | 2014-03-07 | 14.5d |  |  | 20h | 1,660 | 1,660 |
| 3 | 1.1.1 | Determine project scope |  | 4h | 2014-02-17 | 2014-02-17 |  | 2014-02-17 | 2014-02-17 | 4h | 0d | Management | 4h | 300 | 300 |
| 4 | 1.1.2 | Write Scope Document |  | 12d | 2014-02-17 | 2014-03-05 | 3 | 2014-02-17 | 2014-03-05 | 12d | 0d |  |  |  |  |
| 5 | 1.1.3 | Define preliminary resources |  | 1d | 2014-03-05 | 2014-03-06 | 4 | 2014-03-05 | 2014-03-06 | 1d | 0d | Project Manager | 8h | 680 | 680 |
| 6 | 1.1.4 | Secure core resources |  | 1d | 2014-03-06 | 2014-03-07 | 5 | 2014-03-06 | 2014-03-07 | 1d | 0d | Project Manager | 8h | 680 | 680 |
| 7 | 1.1.5 | Scope complete | milestone | 0d | 2014-03-07 | 2014-03-07 | 6 | 2014-03-07 | 2014-03-07 | 0d | 0d |  |  |  |  |
| 8 | 1.2 | **Software Requirements** |  | 19d | 2014-03-07 | 2014-04-03 |  | 2014-03-07 | 2014-04-03 | 19d | 0d |  | 120h | 8,640 | 8,640 |
| 9 | 1.2.1 | Conduct needs analysis |  | 5d | 2014-03-07 | 2014-03-14 | 7 | 2014-03-07 | 2014-03-14 | 5d | 0d | Analyst | 40h | 2,600 | 2,600 |
| 10 | 1.2.2 | Draft preliminary software specifications |  | 3d | 2014-03-14 | 2014-03-19 | 9 | 2014-03-14 | 2014-03-19 | 3d | 0d | Analyst | 24h | 1,560 | 1,560 |
| 11 | 1.2.3 | Develop preliminary budget |  | 2d | 2014-03-19 | 2014-03-21 | 10 | 2014-03-19 | 2014-03-21 | 2d | 0d | Project Manager | 16h | 1,360 | 1,360 |
| 12 | 1.2.4 | Review software specifications/budget with team |  | 4h | 2014-03-21 | 2014-03-21 | 11 | 2014-03-21 | 2014-03-21 | 4h | 0d | Project Manager; Analyst | 8h | 600 | 600 |
| 13 | 1.2.5 | Incorporate feedback on software specifications |  | 1d | 2014-03-24 | 2014-03-24 | 12 | 2014-03-24 | 2014-03-24 | 1d | 0d | Analyst | 8h | 520 | 520 |
| 14 | 1.2.6 | Develop delivery timeline |  | 1d | 2014-03-25 | 2014-03-25 | 13 | 2014-03-25 | 2014-03-25 | 1d | 0d | Project Manager | 8h | 680 | 680 |
| 15 | 1.2.7 | Create Project Plan |  | 5d | 2014-03-26 | 2014-04-01 | 14 | 2014-03-26 | 2014-04-01 | 5d | 0d |  |  |  |  |
| 16 | 1.2.8 | Obtain approvals to proceed (concept, timeline, budget) |  | 4h | 2014-04-02 | 2014-04-02 | 15 | 2014-04-02 | 2014-04-02 | 4h | 0d | Management; Project Manager | 8h | 640 | 640 |
| 17 | 1.2.9 | Secure required resources |  | 1d | 2014-04-02 | 2014-04-03 | 16, 15 | 2014-04-02 | 2014-04-03 | 1d | 0d | Project Manager | 8h | 680 | 680 |
| 18 | 1.2.10 | Analysis complete | milestone | 0d | 2014-04-03 | 2014-04-03 | 17 | 2014-04-03 | 2014-04-03 | 0d | 0d |  |  |  |  |
| 19 | 2 | **Elaboration** |  | 16.5d | 2014-04-03 | 2014-04-25 |  | 2014-04-03 | 2014-04-29 | 18.5d | 0d |  | 136h | 9,120 | 10,160 |
| 20 | 2.1 | Review preliminary software specifications |  | 2d | 2014-04-03 | 2014-04-07 | 18 | 2014-04-03 | 2014-04-07 | 2d | 0d | Analyst | 16h | 1,040 | 1,040 |
| 21 | 2.2 | Develop functional specifications |  | 5d | 2014-04-07 | 2014-04-14 | 20 | 2014-04-07 | 2014-04-14 | 5d | 0d | Analyst | 40h | 2,600 | 2,600 |
| 22 | 2.3 | Develop prototype based on functional specifications |  | 7d | 2014-04-14 | 2014-04-23 | 21 | 2014-04-14 | 2014-04-25 | 9d | 0d | Analyst | 56h | 3,640 | 4,680 |
| 23 | 2.4 | Review functional specifications |  | 2d | 2014-04-23 | 2014-04-25 | 22 | 2014-04-25 | 2014-04-29 | 2d | 0d | Management | 16h | 1,200 | 1,200 |
| 24 | 2.5 | Obtain approval to proceed |  | 4h | 2014-04-25 | 2014-04-25 | 23 | 2014-04-29 | 2014-04-29 | 4h | 0d | Management; Project Manager | 8h | 640 | 640 |
| 25 | 2.6 | Design complete | milestone | 0d | 2014-04-25 | 2014-04-25 | 24 | 2014-04-29 | 2014-04-29 | 0d | 0d |  |  |  |  |

| ID | WBS | Task | Type | Duration | Start | Finish | Predecessors | Baseline start | Baseline finish | Baseline duration | Total slack | Resources | Work | Cost | Baseline cost |
| --- | --- | --- | --- | --- | --- | --- | --- | --- | --- | --- | --- | --- | --- | --- | --- |
| 26 | 3 | **Construction** |  | 28.5d | 2014-04-28 | 2014-06-05 |  | 2014-04-30 | 2014-06-02 | 23.25d | 0d |  | 228h | 13,928 | 11,532 |
| 27 | 3.1 | Re-Review functional specifications |  | 1d | 2014-04-28 | 2014-04-28 | 25 | 2014-04-30 | 2014-04-30 | 1d | 0d | Developer | 8h | 496 | 496 |
| 28 | 3.2 | **Develop code for use case** |  | 21d | 2014-04-29 | 2014-05-27 | 27 |  |  |  | 0d | Developer | 168h | 10,416 |  |
| 29 | 3.2.1 | **Develop code for use case 1** |  | 10.5d | 2014-04-29 | 2014-05-13 |  |  |  |  | 0d |  |  |  |  |
| 30 | 3.2.1.1 | Create and Refine Homepage |  | 4h | 2014-04-29 | 2014-04-29 |  |  |  |  | 0d |  |  |  |  |
| 31 | 3.2.1.2 | Create webpages using functionality based on use cases |  | 1d | 2014-04-29 | 2014-04-30 | 30 |  |  |  | 0d |  |  |  |  |
| 32 | 3.2.1.3 | create content needed for each page |  | 6d | 2014-04-30 | 2014-05-08 | 31 |  |  |  | 0d |  |  |  |  |
| 33 | 3.2.1.4 | Create links/connections to pages |  | 1d | 2014-05-08 | 2014-05-09 | 32 |  |  |  | 0d |  |  |  |  |
| 34 | 3.2.1.5 | Developer testing (primary debugging) |  | 2d | 2014-05-09 | 2014-05-13 | 33 | 2014-05-26 | 2014-06-02 | 5d | 0d |  |  |  | 2,480 |
| 35 | 3.2.2 | **Develop code for use case 2** |  | 10.5d | 2014-05-13 | 2014-05-27 | 29 |  |  |  | 0d |  |  |  |  |
| 36 | 3.2.2.1 | Create and Refine Homepage |  | 4h | 2014-05-13 | 2014-05-13 |  |  |  |  | 0d |  |  |  |  |
| 37 | 3.2.2.2 | Create webpages using functionality based on use cases |  | 1d | 2014-05-14 | 2014-05-14 | 36 |  |  |  | 0d |  |  |  |  |
| 38 | 3.2.2.3 | create content needed for each page |  | 6d | 2014-05-15 | 2014-05-22 | 37 |  |  |  | 0d |  |  |  |  |
| 39 | 3.2.2.4 | Create links/connections to pages |  | 1d | 2014-05-23 | 2014-05-23 | 38 |  |  |  | 0d |  |  |  |  |
| 40 | 3.2.2.5 | Developer testing (primary debugging) |  | 2d | 2014-05-26 | 2014-05-27 | 39 | 2014-05-26 | 2014-06-02 | 5d | 0d |  |  |  | 2,480 |
| 41 | 3.2.3 | Development complete | milestone | 0d | 2014-05-27 | 2014-05-27 | 35, 28 | 2014-06-02 | 2014-06-02 | 0d | 0d |  |  |  |  |
| 42 | 3.3 | **Testing** |  | 6.5d | 2014-05-28 | 2014-06-05 |  | 2014-06-02 | 2014-06-24 | 16d | 0d |  | 52h | 3,016 | 7,424 |
| 43 | 3.3.1 | **Unit Testing** |  | 6.5d | 2014-05-28 | 2014-06-05 |  | 2014-06-02 | 2014-06-13 | 9.5d | 0d |  | 52h | 3,016 | 4,408 |
| 44 | 3.3.1.1 | Review modular code |  | 1.5d | 2014-05-28 | 2014-05-29 | 41 | 2014-06-02 | 2014-06-03 | 1.5d | 0d | Testers | 12h | 696 | 696 |
| 45 | 3.3.1.2 | Test component modules to product specifications |  | 1d | 2014-05-29 | 2014-05-30 | 41, 44 | 2014-06-03 | 2014-06-05 | 2d | 0d | Testers | 8h | 464 | 928 |
| 46 | 3.3.1.3 | Identify anomalies to product specifications |  | 8h | 2014-05-30 | 2014-06-02 | 45 | 2014-06-05 | 2014-06-06 | 1d | 0d | Testers | 8h | 464 | 464 |
| 47 | 3.3.1.4 | Modify code |  | 2d | 2014-06-02 | 2014-06-04 | 46 | 2014-06-06 | 2014-06-11 | 3d | 0d | Testers | 16h | 928 | 1,392 |
| 48 | 3.3.1.5 | Re-test modified code |  | 1d | 2014-06-04 | 2014-06-05 | 47 | 2014-06-11 | 2014-06-13 | 2d | 0d | Testers | 8h | 464 | 928 |
| 49 | 3.3.1.6 | Unit testing complete | milestone | 0d | 2014-06-05 | 2014-06-05 | 48 | 2014-06-13 | 2014-06-13 | 0d | 8d |  |  |  |  |
| 50 | 3.3.2 | Complete Testing | milestone | 0d | 2014-06-05 | 2014-06-05 | 48 | 2014-06-24 | 2014-06-24 |  | 0d |  |  |  |  |

| ID | WBS | Task | Type | Duration | Start | Finish | Predecessors | Baseline start | Baseline finish | Baseline duration | Total slack | Resources | Work | Cost | Baseline cost |
| --- | --- | --- | --- | --- | --- | --- | --- | --- | --- | --- | --- | --- | --- | --- | --- |
| 51 | 4 | **Transition** |  | 8d | 2014-06-05 | 2014-06-17 |  |  |  |  | 0d |  | 64h | 3,840 |  |
| 52 | 4.1 | **Deployment** |  | 5d | 2014-06-05 | 2014-06-12 |  | 2014-06-24 | 2014-07-01 | 5d | 0d |  | 40h | 1,800 | 1,800 |
| 53 | 4.1.1 | Determine final deployment strategy |  | 1d | 2014-06-05 | 2014-06-06 | 50 | 2014-06-24 | 2014-06-25 | 1d | 0d | Deployment Team | 8h | 360 | 360 |
| 54 | 4.1.2 | Develop deployment methodology |  | 1d | 2014-06-06 | 2014-06-09 | 53 | 2014-06-25 | 2014-06-26 | 1d | 0d | Deployment Team | 8h | 360 | 360 |
| 55 | 4.1.3 | Secure deployment resources |  | 1d | 2014-06-09 | 2014-06-10 | 54 | 2014-06-26 | 2014-06-27 | 1d | 0d | Deployment Team | 8h | 360 | 360 |
| 56 | 4.1.4 | Train staff |  | 1d | 2014-06-10 | 2014-06-11 | 55 | 2014-06-27 | 2014-06-30 | 1d | 0d | Deployment Team | 8h | 360 | 360 |
| 57 | 4.1.5 | Deploy software |  | 1d | 2014-06-11 | 2014-06-12 | 56 | 2014-06-30 | 2014-07-01 | 1d | 0d | Deployment Team | 8h | 360 | 360 |
| 58 | 4.1.6 | Deployment complete | milestone | 0d | 2014-06-12 | 2014-06-12 | 57 | 2014-07-01 | 2014-07-01 | 0d | 0d |  |  |  |  |
| 59 | 4.2 | **Post Implementation Review** |  | 3d | 2014-06-12 | 2014-06-17 |  | 2014-07-01 | 2014-07-04 | 3d | 0d |  | 24h | 2,040 | 2,040 |
| 60 | 4.2.1 | Document lessons learned |  | 1d | 2014-06-12 | 2014-06-13 | 58 | 2014-07-01 | 2014-07-02 | 1d | 0d | Project Manager | 8h | 680 | 680 |
| 61 | 4.2.2 | Distribute to team members |  | 1d | 2014-06-13 | 2014-06-16 | 60 | 2014-07-02 | 2014-07-03 | 1d | 0d | Project Manager | 8h | 680 | 680 |
| 62 | 4.2.3 | Create software maintenance team |  | 1d | 2014-06-16 | 2014-06-17 | 61 | 2014-07-03 | 2014-07-04 | 1d | 0d | Project Manager | 8h | 680 | 680 |
| 63 | 4.2.4 | Post implementation review complete | milestone | 0d | 2014-06-17 | 2014-06-17 | 62 | 2014-07-04 | 2014-07-04 | 0d | 0d |  |  |  |  |
